# Parking

Schedule from MS Project, 2025-10-14 to 2027-05-05, costs in zł.

## Calendars

- Standardowy: Mon-Fri 09:00-13:00, 14:00-18:00; Sat-Sun off.

## Resources

| Resource | Rate |
| --- | --- |
| Zarząd uczelni i Rektor | 30 |
| Kierownik projektu | 200 |
| Przedstawiciele wydziałów uczelni | 30 |
| Architekt | 70 |
| inż.. Konstrukcji | 70 |
| geotechnik | 50 |
| specjalista ds. środowiska | 45 |
| Dział prawny uczelni | 100 |
| Kosztorysant | 40 |
| Generalny wykonawca | 1800000 |
| Dostawcy systemu parkingowego | 50000 |
| Inspektor nadzoru inwenstorskiego | 35 |
| BHPowiec | 45 |
| Urząd miasta |  |
| Mieszkańcy |  |
| Operator parkingu | 40 |
| Sprzęt budowlany |  |
| Materiały budowlane | 12000000 |
| Systemy parkingowe | 200000 |
| Systemy CCTV | 40000 |
| System oświetlenia | 30000 |
| Sytemy informacyjne (aplikacja i system zarządzania parkingiem) | 50000 |
| Środki zabezpieczenia placu budowy | 10000 |
| Usługi geodezyjne | 3500 |
| Ubezpieczyciel | 500000 |

## Schedule

| ID | WBS | Task | Duration | Start | Finish | Predecessors | Total slack | Free slack | Resources | Work | Cost |
| --- | --- | --- | --- | --- | --- | --- | --- | --- | --- | --- | --- |
| 1 | 1 | **Budowa Parkingu** | 407d | 2025-10-14 | 2027-05-05 |  | 0d |  |  | 3894.32h | 22,062,304 |
| 2 | 1.1 | **Inicjacja projektu** | 10d | 2025-10-14 | 2025-10-27 |  | 0d |  |  | 172h | 18,080 |
| 3 | 1.1.1 | Powołanie zespołu projektowego | 5d | 2025-10-14 | 2025-10-20 |  | 0d |  | Kierownik projektu [50%] | 20h | 4,000 |
| 4 | 1.1.2 | Ocena lokalizacji | 2d | 2025-10-14 | 2025-10-15 |  | 405d |  | Architekt; geotechnik; Kierownik projektu [50%]; Przedstawiciele wydziałów uczelni; Zarząd uczelni i Rektor | 72h | 4,480 |
| 5 | 1.1.3 | Stworzenie budżetu wstępnego | 5d | 2025-10-21 | 2025-10-27 | 3 | 0d |  | Kosztorysant; Kierownik projektu | 80h | 9,600 |
| 6 | 1.2 | **Planowanie** | 10d | 2025-10-28 | 2025-11-10 |  | 0d |  |  | 314.32h | 16,384 |
| 7 | 1.2.1 | Szczegółowy harmonogram i plan ryzyka | 3d | 2025-10-28 | 2025-10-30 | 5 | 394d |  | Architekt; geotechnik; Kierownik projektu [33%]; specjalista ds. środowiska [50%] | 67.92h | 5,004 |
| 8 | 1.2.2 | Plan finansowania | 5d | 2025-10-28 | 2025-11-03 | 5 | 0d |  | Kierownik projektu [33%]; Kosztorysant; Zarząd uczelni i Rektor | 93.2h | 5,440 |
| 9 | 1.2.3 | Spotkania z mieszkańcami i interesariuszami | 5d | 2025-11-04 | 2025-11-10 | 8 | 0d |  | Kierownik projektu [33%]; Mieszkańcy; Przedstawiciele wydziałów uczelni; specjalista ds. środowiska [50%]; Zarząd uczelni i Rektor | 153.2h | 5,940 |
| 10 | 1.3 | **Badania i dokumentacja wstepna** | 15d | 2025-11-11 | 2025-12-01 |  | 0d |  |  | 480h | 33,600 |
| 11 | 1.3.1 | Badania geotechnicznie i inwentaryzacja terenu | 15d | 2025-11-11 | 2025-12-01 | 9 | 372d |  | geotechnik | 120h | 6,000 |
| 12 | 1.3.2 | Warunki przyłączeń (woda, energia, kanalizacja) | 15d | 2025-11-11 | 2025-12-01 | 9 | 0d |  | Kierownik projektu; Urząd miasta; Zarząd uczelni i Rektor | 360h | 27,600 |
| 13 | 1.4 | **Projektowanie** | 45d | 2025-12-02 | 2026-02-02 |  | 0d |  |  | 600h | 104,000 |
| 14 | 1.4.1 | Koncepcja architektoniczna | 15d | 2025-12-02 | 2025-12-22 | 12 | 0d |  | Architekt | 120h | 8,400 |
| 15 | 1.4.2 | Projekt konstrukcyjny i instalacje | 30d | 2025-12-23 | 2026-02-02 | 14 | 0d |  | inż.. Konstrukcji | 240h | 16,800 |
| 16 | 1.4.3 | Projekt systemu zarządzania parkingiem ( liczniki miejsc, CCTV) | 20d | 2025-12-02 | 2025-12-29 | 12 | 10d | 0d | Sytemy informacyjne (aplikacja i system zarządzania parkingiem) |  | 50,000 |
| 17 | 1.4.4 | Kosztorys i harmonogram wykonawczy | 15d | 2025-12-30 | 2026-01-19 | 16 | 10d |  | Kierownik projektu; Kosztorysant | 240h | 28,800 |
| 18 | 1.5 | **Pozyskanie pozwoleń** | 60d | 2026-02-03 | 2026-04-27 |  | 0d |  |  | 1360h | 102,400 |
| 19 | 1.5.1 | Złożenie dokumentacji do urzędu, uzyskanie pozwoleń na budowę | 60d | 2026-02-03 | 2026-04-27 | 13 | 0d |  | Kierownik projektu [50%]; Urząd miasta [50%]; Zarząd uczelni i Rektor | 960h | 62,400 |
| 20 | 1.5.2 | Uzyskanie warunków przyłaczeń i zgód administracyjnych | 50d | 2026-02-03 | 2026-04-13 | 13 | 10d |  | Kierownik projektu [50%]; Urząd miasta [50%] | 400h | 40,000 |
| 21 | 1.6 | **Realizacja/Budowa** | 310d | 2026-02-03 | 2027-04-12 |  | 0d |  |  | 480h | 19,344,000 |
| 22 | 1.6.1 | Przygotowanie placu budowy | 10d | 2026-02-03 | 2026-02-16 | 13 | 300d |  | Generalny wykonawca |  | 1,800,000 |
| 23 | 1.6.2 | Roboty ziemne i fundamenty | 60d | 2026-04-28 | 2026-07-20 | 18 | 0d |  | Generalny wykonawca; geotechnik | 480h | 1,824,000 |
| 24 | 1.6.3 | konstrukcja | 100d | 2026-07-21 | 2026-12-07 | 23 | 0d |  | Generalny wykonawca; Materiały budowlane |  | 13,800,000 |
| 25 | 1.6.4 | Instalacje elektryczne, oświetlenie, CCTV, system zarządzania | 50d | 2026-12-08 | 2027-02-15 | 24 | 0d |  | Systemy CCTV; Sytemy informacyjne (aplikacja i system zarządzania parkingiem); System oświetlenia |  | 120,000 |
| 26 | 1.6.5 | Wykończenia, nawierzchnie, oznakowanie | 40d | 2027-02-16 | 2027-04-12 | 25 | 0d |  | Generalny wykonawca |  | 1,800,000 |

| ID | WBS | Task | Duration | Start | Finish | Predecessors | Total slack | Resources | Work | Cost |
| --- | --- | --- | --- | --- | --- | --- | --- | --- | --- | --- |
| 27 | 1.7 | **Testy, szkolenia, odbiory** | 15d | 2027-04-13 | 2027-05-03 |  | 0d |  | 380h | 2,435,600 |
| 28 | 1.7.1 | Testy systemów IT i integracja | 10d | 2027-04-13 | 2027-04-26 | 21 | 0d | Sytemy informacyjne (aplikacja i system zarządzania parkingiem) |  | 50,000 |
| 29 | 1.7.2 | Odbiory techniczne | 10d | 2027-04-13 | 2027-04-26 | 21 | 5d | BHPowiec; Dział prawny uczelni; Generalny wykonawca; Kierownik projektu; Zarząd uczelni i Rektor; Ubezpieczyciel | 320h | 2,330,000 |
| 30 | 1.7.3 | Szkolenia personelu uczelni obsługi parkingu | 5d | 2027-04-27 | 2027-05-03 | 28 | 0d | Kierownik projektu [50%]; Sytemy informacyjne (aplikacja i system zarządzania parkingiem); Operator parkingu | 60h | 55,600 |
| 31 | 1.8 | **Przekazanie i zamknięcie projektu** | 7d | 2027-04-27 | 2027-05-05 |  | 0d |  | 108h | 8,240 |
| 32 | 1.8.1 | Formale przekazanie do ekspoloatacji | 2d | 2027-05-04 | 2027-05-05 | 27 | 0d | Kierownik projektu; Przedstawiciele wydziałów uczelni; Zarząd uczelni i Rektor | 48h | 4,160 |
| 33 | 1.8.2 | Dokumentacja powykonawcza i raport końcowy | 3d | 2027-04-27 | 2027-04-29 | 28 | 4d | Kierownik projektu [50%]; Kosztorysant; Zarząd uczelni i Rektor | 60h | 4,080 |
